Schedule from MS Project, 2017-05-10 to 2017-07-19, A marks actual dates.

## Calendars

- Estándar: Mon-Fri 09:00-13:00, 15:00-19:00; Sat-Sun off.

## Schedule

| ID | WBS | Task | Duration | Start | Finish | Predecessors | Complete | Remaining | Total slack | Work | Actual work |
| --- | --- | --- | --- | --- | --- | --- | --- | --- | --- | --- | --- |
| 1 | 1 | **Cronograma de Proyecto Interfase VOIP 1.5** | 50.06d? | 2017-05-10 09:00 A | 2017-07-19 09:30 |  | 50% | 24.83d? | 0d | 289.5h | 160h |
| 2 | 1.1 | **Proceso de gestion** | 14.25d | 2017-05-10 09:00 A | 2017-05-30 11:00 |  | 89% | 1.56d | 0d | 119h | 106h |
| 3 | 1.1.1 | **Inicio** | 0.62d | 2017-05-10 09:00 A | 2017-05-10 16:00 A |  | 100% |  |  | 5h | 5h |
| 4 | 1.1.1.1 | Revision de metodologia de trabajo | 5h | 2017-05-10 09:00 A | 2017-05-10 16:00 A |  | 100% |  |  | 5h | 5h |
| 5 | 1.1.2 | **Planificacion del plan de proyecto** | 5.25d | 2017-05-10 16:00 A | 2017-05-17 18:00 A | 3 | 100% |  |  | 42h | 42h |
| 6 | 1.1.2.1 | **Elaboracion del plan de proyecto** | 3.88d | 2017-05-10 16:00 A | 2017-05-16 13:00 A |  | 100% |  |  | 31h | 31h |
| 7 | 1.1.2.1.1 | Definir Nombre del Proyecto | 2h | 2017-05-10 16:00 A | 2017-05-10 18:00 A |  | 100% |  |  | 2h | 2h |
| 8 | 1.1.2.1.2 | Definir Objetivos de Proyecto | 4h | 2017-05-10 18:00 A | 2017-05-11 12:00 A | 7 | 100% |  |  | 4h | 4h |
| 9 | 1.1.2.1.3 | Elaboración de Cronograma Detallado | 4h | 2017-05-11 12:00 A | 2017-05-11 18:00 A | 8 | 100% |  |  | 4h | 4h |
| 10 | 1.1.2.1.4 | Gestión de Comunicaciones | 3h | 2017-05-11 18:00 A | 2017-05-12 11:00 A | 9 | 100% |  |  | 3h | 3h |
| 11 | 1.1.2.1.5 | Necesidades del Proyecto | 3h | 2017-05-12 11:00 A | 2017-05-12 16:00 A | 10 | 100% |  |  | 3h | 3h |
| 12 | 1.1.2.1.6 | Identificación de Riesgos del Proyecto | 3h | 2017-05-12 16:00 A | 2017-05-12 19:00 A | 11 | 100% |  |  | 3h | 3h |
| 13 | 1.1.2.1.7 | Elaborar Documento de Riesgos del Proyecto | 3h | 2017-05-15 09:00 A | 2017-05-15 12:00 A | 12 | 100% |  |  | 3h | 3h |
| 14 | 1.1.2.1.8 | Elaborar Documento Plan de Proyecto | 8h | 2017-05-15 12:00 A | 2017-05-16 12:00 A | 13 | 100% |  |  | 8h | 8h |
| 15 | 1.1.2.1.9 | Traspaso de Información | 1h | 2017-05-16 12:00 A | 2017-05-16 13:00 A | 14 | 100% |  |  | 1h | 1h |
| 16 | 1.1.2.2 | **Revision interna del plan de proyecto** | 0.62d | 2017-05-16 15:00 A | 2017-05-17 10:00 A | 6 | 100% |  |  | 5h | 5h |
| 17 | 1.1.2.2.1 | Revisión de Plan de Proyecto por el equipo del Proyecto | 1h | 2017-05-16 15:00 A | 2017-05-16 16:00 A |  | 100% |  |  | 1h | 1h |
| 18 | 1.1.2.2.2 | Ajustes al Plan de Proyecto | 1h | 2017-05-16 16:00 A | 2017-05-16 17:00 A | 17 | 100% |  |  | 1h | 1h |
| 19 | 1.1.2.2.3 | Elaborar Acta de REVISION INTERNA del PLAN DE PROYECTO | 2h | 2017-05-16 17:00 A | 2017-05-16 19:00 A | 18 | 100% |  |  | 2h | 2h |
| 20 | 1.1.2.2.4 | Traspaso de Información | 1h | 2017-05-17 09:00 A | 2017-05-17 10:00 A | 19 | 100% |  |  | 1h | 1h |
| 21 | 1.1.2.3 | **Gestion de la configuracion** | 0.75d | 2017-05-17 10:00 A | 2017-05-17 18:00 A | 16 | 100% |  |  | 6h | 6h |
| 22 | 1.1.2.3.1 | Establecer Repositorio de Datos | 3h | 2017-05-17 10:00 A | 2017-05-17 13:00 A |  | 100% |  |  | 3h | 3h |
| 23 | 1.1.2.3.2 | Asignar Gestor de Configuración | 2h | 2017-05-17 15:00 A | 2017-05-17 17:00 A | 22 | 100% |  |  | 2h | 2h |
| 24 | 1.1.2.3.3 | Elaborar Solicitud de Accesos | 1h | 2017-05-17 17:00 A | 2017-05-17 18:00 A | 23 | 100% |  |  | 1h | 1h |

| ID | WBS | Task | Duration | Start | Finish | Predecessors | Complete | Work | Actual work |
| --- | --- | --- | --- | --- | --- | --- | --- | --- | --- |
| 25 | 1.1.3 | **Ejecucion, Seguimiento y control** | 6.75d | 2017-05-17 18:00 A | 2017-05-26 16:00 A | 5 | 100% | 59h | 59h |
| 26 | 1.1.3.1 | **Desarrollo del Área de Proceso PP- PMC** | 1.88d | 2017-05-17 18:00 A | 2017-05-19 17:00 A |  | 100% | 15h | 15h |
| 27 | 1.1.3.1.1 | Elaborar Plantilla de Reunión Externa Mensual | 2h | 2017-05-17 18:00 A | 2017-05-18 10:00 A |  | 100% | 2h | 2h |
| 28 | 1.1.3.1.2 | Elaborar Plantilla de Gestion de Riesgos | 2h | 2017-05-18 10:00 A | 2017-05-18 12:00 A | 27 | 100% | 2h | 2h |
| 29 | 1.1.3.1.3 | Elaborar Plantilla de Informe de Avances Quincenales | 2h | 2017-05-18 12:00 A | 2017-05-18 16:00 A | 28 | 100% | 2h | 2h |
| 30 | 1.1.3.1.4 | Elaborar Plantillas de Actas de Reunión Interna Quincenal | 2h | 2017-05-18 16:00 A | 2017-05-18 18:00 A | 29 | 100% | 2h | 2h |
| 31 | 1.1.3.1.5 | Elaborar Formato de Aceptación de Entregables | 2h | 2017-05-18 18:00 A | 2017-05-19 10:00 A | 30 | 100% | 2h | 2h |
| 32 | 1.1.3.1.6 | Elaborar Documento Gestión de Procesos PP-PMC | 4h | 2017-05-19 10:00 A | 2017-05-19 16:00 A | 31 | 100% | 4h | 4h |
| 33 | 1.1.3.1.7 | Traspaso de Información | 1h | 2017-05-19 16:00 A | 2017-05-19 17:00 A | 32 | 100% | 1h | 1h |
| 34 | 1.1.3.2 | **Desarrollo del Área de Proceso REQM** | 1.12d | 2017-05-19 17:00 A | 2017-05-22 18:00 A | 26 | 100% | 9h | 9h |
| 35 | 1.1.3.2.1 | Elaborar Formato de Solicitud a Cambios a Requerimientos | 2h | 2017-05-19 17:00 A | 2017-05-19 19:00 A |  | 100% | 2h | 2h |
| 36 | 1.1.3.2.2 | Elaborar Formato de Matriz de Trazabilidad de Requerimientos | 2h | 2017-05-22 09:00 A | 2017-05-22 11:00 A | 35 | 100% | 2h | 2h |
| 37 | 1.1.3.2.3 | Elaborar Formato de Registro de Cambios a Requerimientos | 2h | 2017-05-22 11:00 A | 2017-05-22 13:00 A | 36 | 100% | 2h | 2h |
| 38 | 1.1.3.2.4 | Elaborar Documento de Proceso de Gestión de cambios de Requerimientos | 2h | 2017-05-22 15:00 A | 2017-05-22 17:00 A | 37 | 100% | 2h | 2h |
| 39 | 1.1.3.2.5 | Traspaso de Información | 1h | 2017-05-22 17:00 A | 2017-05-22 18:00 A | 38 | 100% | 1h | 1h |
| 40 | 1.1.3.3 | **Desarrollo del Área de Proceso PPQA** | 1.12d | 2017-05-22 18:00 A | 2017-05-23 19:00 A | 34 | 100% | 13h | 13h |
| 41 | 1.1.3.3.1 | Elaborar Formato de CheckList de Aseguramiento de la Calidad | 2h | 2017-05-22 18:00 A | 2017-05-23 10:00 A |  | 100% | 2h | 2h |
| 42 | 1.1.3.3.2 | Elaborar Herramienta de Gestión de Aseguramiento de la Calidad | 2h | 2017-05-23 10:00 A | 2017-05-23 12:00 A | 41 | 100% | 2h | 2h |
| 43 | 1.1.3.3.3 | Elaborar Matriz de Seguimiento de Proyecto Interno | 2h | 2017-05-22 18:00 A | 2017-05-23 10:00 A |  | 100% | 2h | 2h |
| 44 | 1.1.3.3.4 | Elaborar documento de Proceso de Aseguramiento de la calidad | 6h | 2017-05-23 10:00 A | 2017-05-23 18:00 A | 43 | 100% | 6h | 6h |
| 45 | 1.1.3.3.5 | Traspaso de Información | 1h | 2017-05-23 18:00 A | 2017-05-23 19:00 A | 44 | 100% | 1h | 1h |
| 46 | 1.1.3.4 | **Desarrollo del Área de Proceso MA** | 1.75d | 2017-05-24 09:00 A | 2017-05-25 17:00 A | 40 | 100% | 15h | 15h |
| 47 | 1.1.3.4.1 | Elaborar Formato de Ficha de Métricas de Numero de N Conformidades de Producto | 3h | 2017-05-24 09:00 A | 2017-05-24 12:00 A |  | 100% | 3h | 3h |
| 48 | 1.1.3.4.2 | Elaborar Formato de Ficha de Métricas de Índice de Cambios de Ítems de Configuración | 3h | 2017-05-24 12:00 A | 2017-05-24 17:00 A | 47 | 100% | 3h | 3h |
| 49 | 1.1.3.4.3 | Elaborar Formato de Ficha de Métricas de Volatilidad de Requerimientos | 3h | 2017-05-24 17:00 A | 2017-05-25 10:00 A | 48 | 100% | 3h | 3h |
| 50 | 1.1.3.4.4 | Elaborar Formato de Ficha de Métricas de Exposición al Riesgo | 3h | 2017-05-25 10:00 A | 2017-05-25 13:00 A | 49 | 100% | 3h | 3h |
| 51 | 1.1.3.4.5 | Elaborar Formato de Tablero de Métricas | 2h | 2017-05-25 15:00 A | 2017-05-25 17:00 A | 50 | 100% | 2h | 2h |
| 52 | 1.1.3.4.6 | Traspaso de Información | 1h | 2017-05-24 09:00 A | 2017-05-24 10:00 A |  | 100% | 1h | 1h |

| ID | WBS | Task | Duration | Start | Finish | Predecessors | Complete | Remaining | Total slack | Work | Actual work |
| --- | --- | --- | --- | --- | --- | --- | --- | --- | --- | --- | --- |
| 53 | 1.1.3.5 | **Desarrollo del Área de Proceso CM** | 0.88d | 2017-05-25 17:00 A | 2017-05-26 16:00 A | 46 | 100% |  |  | 7h | 7h |
| 54 | 1.1.3.5.1 | Elaborar Formato de Registro de Ítems de Configuración | 2h | 2017-05-25 17:00 A | 2017-05-25 19:00 A |  | 100% |  |  | 2h | 2h |
| 55 | 1.1.3.5.2 | Elaborar Formato de Solicitud de Accesos | 2h | 2017-05-26 09:00 A | 2017-05-26 11:00 A | 54 | 100% |  |  | 2h | 2h |
| 56 | 1.1.3.5.3 | Elaborar Documento de Proceso de Gestión de Configuración | 2h | 2017-05-26 11:00 A | 2017-05-26 13:00 A | 55 | 100% |  |  | 2h | 2h |
| 57 | 1.1.3.5.4 | Traspaso de Información | 1h | 2017-05-26 15:00 A | 2017-05-26 16:00 A | 56 | 100% |  |  | 1h | 1h |
| 58 | 1.1.4 | **Cierre** | 1.62d | 2017-05-26 16:00 | 2017-05-30 11:00 | 25 |  |  | 0d | 13h |  |
| 59 | 1.1.4.1 | **Acta de aceptacion y cierre de Proyecto** | 1.12d | 2017-05-26 16:00 | 2017-05-29 17:00 |  |  |  | 0d | 9h |  |
| 60 | 1.1.4.1.1 | Revisión de Entregables del Proyecto | 5h | 2017-05-26 16:00 | 2017-05-29 11:00 |  |  |  | 0d | 5h |  |
| 61 | 1.1.4.1.2 | Elaboración del Acta de Aceptación y Cierre del Proyecto | 3h | 2017-05-29 11:00 | 2017-05-29 16:00 | 60 |  |  | 0d | 3h |  |
| 62 | 1.1.4.1.3 | Traspaso de Información | 1h | 2017-05-29 16:00 | 2017-05-29 17:00 | 61 |  |  | 0d | 1h |  |
| 63 | 1.1.4.2 | **Relatorio de Proyecto** | 0.5d | 2017-05-29 17:00 | 2017-05-30 11:00 | 59 |  |  | 0d | 4h |  |
| 64 | 1.1.4.2.1 | Elaborar Relatorio de Proyecto | 1h | 2017-05-29 17:00 | 2017-05-29 18:00 |  |  |  | 0d | 1h |  |
| 65 | 1.1.4.2.2 | Revisión y ajustes de Relatorio por el equipo del Proyecto | 1h | 2017-05-29 18:00 | 2017-05-29 19:00 | 64 |  |  | 0d | 1h |  |
| 66 | 1.1.4.2.3 | Revisión de Relatorio | 1h | 2017-05-30 09:00 | 2017-05-30 10:00 | 65 |  |  | 0d | 1h |  |
| 67 | 1.1.4.2.4 | Traspaso de Información | 1h | 2017-05-30 10:00 | 2017-05-30 11:00 | 66 |  |  | 0d | 1h |  |
| 68 | 1.2 | **Proceso de ingenieria** | 16.62d? | 2017-05-30 11:00 A | 2017-06-21 18:00 | 2 | 21% | 13.15d? | 19.19d | 152h | 40h |
| 69 | 1.2.1 | **Requerimientos** | 1.5d | 2017-05-30 11:00 A | 2017-05-31 17:00 A |  | 100% |  |  | 12h | 12h |
| 70 | 1.2.1.1 | Desarrollo de plan de proyecto | 6h | 2017-05-30 11:00 A | 2017-05-30 19:00 A |  | 100% |  |  | 6h | 6h |
| 71 | 1.2.1.2 | Elaboracion de matriz de trazabilidad de requerimiento | 2h | 2017-05-31 09:00 A | 2017-05-31 11:00 A | 70 | 100% |  |  | 2h | 2h |
| 72 | 1.2.1.3 | Elaborar lista maestra de requerimientos | 2h | 2017-05-31 11:00 A | 2017-05-31 13:00 A | 71 | 100% |  |  | 2h | 2h |
| 73 | 1.2.1.4 | Trapaso de informacion | 2h | 2017-05-31 15:00 A | 2017-05-31 17:00 A | 72 | 100% |  |  | 2h | 2h |
| 74 | 1.2.2 | **Analisis** | 1.25d | 2017-05-31 17:00 A | 2017-06-01 19:00 | 69 | 10% | 1.12d | 0d | 10h | 1h |
| 75 | 1.2.2.1 | Matriz de trazabilidad de requerimientos (Actualizada) | 1h | 2017-05-31 17:00 A | 2017-05-31 18:00 A |  | 100% |  |  | 1h | 1h |
| 76 | 1.2.2.2 | Elaborar documento de analisis | 3h | 2017-05-31 18:00 | 2017-06-01 11:00 | 75 |  |  | 0d | 3h |  |

| ID | WBS | Task | Type | Duration | Start | Finish | Predecessors | Complete | Remaining | Total slack | Work | Actual work |
| --- | --- | --- | --- | --- | --- | --- | --- | --- | --- | --- | --- | --- |
| 77 | 1.2.2.3 | **Casos de uso** |  | 0.75d | 2017-06-01 11:00 | 2017-06-01 19:00 | 76 |  |  | 0d | 6h |  |
| 78 | 1.2.2.3.1 | Caso de uso de cliente |  | 2h | 2017-06-01 11:00 | 2017-06-01 13:00 |  |  |  | 0d | 2h |  |
| 79 | 1.2.2.3.2 | Caso de uso de distribuidor |  | 2h | 2017-06-01 15:00 | 2017-06-01 17:00 | 78 |  |  | 0d | 2h |  |
| 80 | 1.2.2.3.3 | Caso de uso de administrador |  | 2h | 2017-06-01 17:00 | 2017-06-01 19:00 | 79 |  |  | 0d | 2h |  |
| 81 | 1.2.3 | **Diseño** |  | 0.62d | 2017-06-02 09:00 | 2017-06-02 16:00 | 74 |  |  | 0d | 5h |  |
| 82 | 1.2.3.1 | Elaborar documento de diseño |  | 3h | 2017-06-02 09:00 | 2017-06-02 12:00 |  |  |  | 0d | 3h |  |
| 83 | 1.2.3.2 | Matriz de trazabilidad de requerimientos (Actualizada) |  | 1h | 2017-06-02 12:00 | 2017-06-02 13:00 | 82 |  |  | 0d | 1h |  |
| 84 | 1.2.3.3 | Traspaso de informacion |  | 1h | 2017-06-02 15:00 | 2017-06-02 16:00 | 83 |  |  | 0d | 1h |  |
| 85 | 1.2.4 | **Construccion** |  | 10d? | 2017-06-02 16:00 A | 2017-06-16 16:00 | 81 | 19% | 8.08d? | 0d | 92h | 24h |
| 86 | 1.2.4.1 | Matriz de trazabilidad de requerimientos (Actualizada) | manual | 1d? | 2017-06-02 16:00 | 2017-06-05 16:00 |  |  |  |  |  |  |
| 87 | 1.2.4.2 | **Modulo de clientes** |  | 2.5d | 2017-06-02 16:00 A | 2017-06-07 10:00 A |  | 100% |  |  | 24h | 24h |
| 88 | 1.2.4.2.1 | Reporte de llamadas |  | 1d | 2017-06-02 16:00 A | 2017-06-05 16:00 A |  | 100% |  |  | 8h | 8h |
| 89 | 1.2.4.2.2 | Reporte de recargas |  | 1d | 2017-06-05 16:00 A | 2017-06-06 16:00 A | 88 | 100% |  |  | 8h | 8h |
| 90 | 1.2.4.2.3 | Reporte de Anexos |  | 4h | 2017-06-06 16:00 A | 2017-06-07 10:00 A | 89 | 100% |  |  | 8h | 8h |
| 91 | 1.2.4.3 | **Modulo Distribuidor** |  | 3d | 2017-06-07 10:00 | 2017-06-12 10:00 | 87 |  |  | 0d | 32h |  |
| 92 | 1.2.4.3.1 | Mantenimientos de Clientes |  | 1d | 2017-06-07 10:00 | 2017-06-08 10:00 |  |  |  | 0d | 9h |  |
| 93 | 1.2.4.3.2 | Mantenimiento de Anexos |  | 1d | 2017-06-08 10:00 | 2017-06-09 10:00 | 92 |  |  | 0d | 7h |  |
| 94 | 1.2.4.3.3 | Mantenimiento de Recargas de Clientes |  | 1d | 2017-06-09 10:00 | 2017-06-12 10:00 | 93 |  |  | 0d | 9h |  |
| 95 | 1.2.4.3.4 | Reporte de Recargas |  | 2d | 2017-06-07 10:00 | 2017-06-09 10:00 |  |  |  | 1d | 7h |  |
| 96 | 1.2.4.4 | **Modulo Administrador** |  | 4.5d | 2017-06-12 10:00 | 2017-06-16 16:00 | 91 |  |  | 0d | 36h |  |
| 97 | 1.2.4.4.1 | Reporte de Recargas |  | 5h | 2017-06-12 10:00 | 2017-06-12 17:00 |  |  |  | 0d | 5h |  |
| 98 | 1.2.4.4.2 | Mantenimiento de Distribuidores |  | 7h | 2017-06-12 17:00 | 2017-06-13 16:00 | 97 |  |  | 0d | 7h |  |
| 99 | 1.2.4.4.3 | Reporte de Anexos |  | 8h | 2017-06-13 16:00 | 2017-06-14 16:00 | 98 |  |  | 0d | 8h |  |
| 100 | 1.2.4.4.4 | Mantenimiento de Tarifas |  | 8h | 2017-06-14 16:00 | 2017-06-15 16:00 | 99 |  |  | 0d | 8h |  |
| 101 | 1.2.4.4.5 | Mantenimiento de Recargas de Distribuidores |  | 8h | 2017-06-15 16:00 | 2017-06-16 16:00 | 99, 100 |  |  | 0d | 8h |  |

| ID | WBS | Task | Type | Duration | Start | Finish | Predecessors | Complete | Remaining | Total slack | Free slack | Work | Actual work |
| --- | --- | --- | --- | --- | --- | --- | --- | --- | --- | --- | --- | --- | --- |
| 102 | 1.2.5 | **Pruebas generales** |  | 2.25d? | 2017-06-16 16:00 A | 2017-06-20 18:00 | 96 | 12% | 1.99d? | 19.19d | 0d | 18h | 3h |
| 103 | 1.2.5.1 | Matriz de trazabilidad de requerimientos (Final) | manual | 1d? | 2017-06-16 16:00 | 2017-06-19 16:00 |  |  |  |  |  |  |  |
| 104 | 1.2.5.2 | **Documento de pruebas Funcionales** |  | 1.12d | 2017-06-16 16:00 A | 2017-06-19 17:00 |  | 33% | 0.75d | 19.19d | 0d | 9h | 3h |
| 105 | 1.2.5.2.1 | Modulo cliente |  | 3h | 2017-06-16 16:00 A | 2017-06-16 19:00 A |  | 100% |  |  |  | 3h | 3h |
| 106 | 1.2.5.2.2 | Modulo distribuidor |  | 3h | 2017-06-19 09:00 | 2017-06-19 12:00 | 105 |  |  | 19.19d | 0d | 3h |  |
| 107 | 1.2.5.2.3 | Modulo administrador |  | 3h | 2017-06-19 12:00 | 2017-06-19 17:00 | 106 |  |  | 19.19d |  | 3h |  |
| 108 | 1.2.5.3 | **Documento de Pruebas de Sistemas** |  | 1.12d | 2017-06-19 17:00 | 2017-06-20 18:00 | 104 |  |  | 19.19d |  | 9h |  |
| 109 | 1.2.5.3.1 | Modulo cliente |  | 3h | 2017-06-19 17:00 | 2017-06-20 10:00 |  |  |  | 19.19d | 0d | 3h |  |
| 110 | 1.2.5.3.2 | Modulo distribuidor |  | 3h | 2017-06-20 10:00 | 2017-06-20 13:00 | 109 |  |  | 19.19d | 0d | 3h |  |
| 111 | 1.2.5.3.3 | Modulo administrador |  | 3h | 2017-06-20 15:00 | 2017-06-20 18:00 | 110 |  |  | 19.19d |  | 3h |  |
| 112 | 1.2.6 | **Implementacion** |  | 1d | 2017-06-20 18:00 | 2017-06-21 18:00 | 102 |  |  | 19.19d |  | 15h |  |
| 113 | 1.2.6.1 | Software producido (Final) |  | 4h | 2017-06-20 18:00 | 2017-06-21 12:00 |  |  |  | 19.19d | 0d | 4h |  |
| 114 | 1.2.6.2 | Manual de usuario |  | 4h | 2017-06-21 12:00 | 2017-06-21 18:00 | 113 |  |  | 19.19d |  | 4h |  |
| 115 | 1.2.6.3 | **Despliegue** |  | 0.88d | 2017-06-20 18:00 | 2017-06-21 17:00 |  |  |  | 19.31d |  | 7h |  |
| 116 | 1.2.6.3.1 | Manual de pase a produccion |  | 3h | 2017-06-20 18:00 | 2017-06-21 11:00 |  |  |  | 19.31d | 0d | 3h |  |
| 117 | 1.2.6.3.2 | Manual de instalacion |  | 4h | 2017-06-21 11:00 | 2017-06-21 17:00 | 116 |  |  | 19.31d |  | 4h |  |
| 118 | 1.3 | **Induccion personal** |  | 1d | 2017-07-10 16:00 A | 2017-07-11 16:00 A | 68 | 100% |  |  |  | 8h | 8h |
| 119 | 1.3.1 | Definicion de personal a capacitar |  | 2h | 2017-07-10 16:00 A | 2017-07-10 18:00 A |  | 100% |  |  |  | 2h | 2h |
| 120 | 1.3.2 | Realizar capacitacion |  | 4h | 2017-07-10 18:00 A | 2017-07-11 12:00 A | 119 | 100% |  |  |  | 4h | 4h |
| 121 | 1.3.3 | Resolver dudas adicionales |  | 2h | 2017-07-11 12:00 A | 2017-07-11 16:00 A | 120 | 100% |  |  |  | 2h | 2h |
| 122 | 1.4 | **Procesamiento de Aseguramiento de la calidad de proyecto** |  | 0.38d | 2017-07-11 16:00 A | 2017-07-11 19:00 | 118 | 33% | 0.25d | -0.25d | 0d | 3h | 1h |
| 123 | 1.4.1 | **Primera revision** |  | 0.12d | 2017-07-11 16:00 A | 2017-07-11 17:00 A |  | 100% |  |  |  | 1h | 1h |
| 124 | 1.4.1.1 | Elaboracion de CheckList |  | 1h | 2017-07-11 16:00 A | 2017-07-11 17:00 A |  | 100% |  |  |  | 1h | 1h |
| 125 | 1.4.2 | **Segunda revision** |  | 0.12d | 2017-07-11 17:00 | 2017-07-11 18:00 | 123 |  |  | -38d | 0d | 1h |  |
| 126 | 1.4.2.1 | Elaboracion de CheckList |  | 1h | 2017-07-11 17:00 | 2017-07-11 18:00 |  |  |  | -38d | 0d | 1h |  |

| ID | WBS | Task | Duration | Start | Finish | Predecessors | Complete | Remaining | Total slack | Free slack | Work | Actual work |
| --- | --- | --- | --- | --- | --- | --- | --- | --- | --- | --- | --- | --- |
| 127 | 1.4.3 | **Tercera revision** | 0.12d | 2017-07-11 18:00 | 2017-07-11 19:00 | 125 |  |  | -38d | 0d | 1h |  |
| 128 | 1.4.3.1 | Elaboracion de CheckList | 1h | 2017-07-11 18:00 | 2017-07-11 19:00 |  |  |  | -38d | 0d | 1h |  |
| 129 | 1.5 | **Reuniones Internas** | 42.12d | 2017-05-19 09:00 A | 2017-07-18 10:00 | 122 | 67% | 14.04d | 0d |  | 6h | 4h |
| 130 | 1.5.1 | **reunion quincenal 1** | 0.12d | 2017-05-19 09:00 A | 2017-05-19 10:00 A |  | 100% |  |  |  | 1h | 1h |
| 131 | 1.5.1.1 | Acta de reunion | 1h | 2017-05-19 09:00 A | 2017-05-19 10:00 A |  | 100% |  |  |  | 1h | 1h |
| 132 | 1.5.2 | **reunion quincenal 2** | 0.12d | 2017-06-02 09:00 A | 2017-06-02 10:00 A | 130 | 100% |  |  |  | 1h | 1h |
| 133 | 1.5.2.1 | Acta de reunion | 1h | 2017-06-02 09:00 A | 2017-06-02 10:00 A |  | 100% |  |  |  | 1h | 1h |
| 134 | 1.5.3 | **reunion quincenal 3** | 0.12d | 2017-06-16 09:00 A | 2017-06-16 10:00 A | 132 | 100% |  |  |  | 1h | 1h |
| 135 | 1.5.3.1 | Acta de reunion | 1h | 2017-06-16 09:00 A | 2017-06-16 10:00 A |  | 100% |  |  |  | 1h | 1h |
| 136 | 1.5.4 | **reunion quincenal 4** | 0.12d | 2017-06-30 09:00 A | 2017-06-30 10:00 A | 134 | 100% |  |  |  | 1h | 1h |
| 137 | 1.5.4.1 | Acta de reunion | 1h | 2017-06-30 09:00 A | 2017-06-30 10:00 A |  | 100% |  |  |  | 1h | 1h |
| 138 | 1.5.5 | **reunion quincenal 5** | 0.12d | 2017-07-14 09:00 | 2017-07-14 10:00 |  |  |  |  |  | 1h |  |
| 139 | 1.5.5.1 | Acta de reunion | 1h | 2017-07-14 09:00 | 2017-07-14 10:00 |  |  |  | 0d |  | 1h |  |
| 140 | 1.5.6 | **reunion quincenal 6** | 0.12d | 2017-07-18 09:00 | 2017-07-18 10:00 |  |  |  |  |  | 1h |  |
| 141 | 1.5.6.1 | Acta de reunion | 1h | 2017-07-18 09:00 | 2017-07-18 10:00 |  |  |  | 0d |  | 1h |  |
| 142 | 1.6 | **Reuniones externas** | 40.06d | 2017-05-24 09:00 A | 2017-07-19 09:30 | 129 | 67% | 13.35d | 0d |  | 1.5h | 1h |
| 143 | 1.6.1 | **Primera reunion** | 0.06d | 2017-05-24 09:00 A | 2017-05-24 09:30 A |  | 100% |  |  |  | 0.5h | 0.5h |
| 144 | 1.6.1.1 | Acta de reunion y obbservaciones | 0.5h | 2017-05-24 09:00 A | 2017-05-24 09:30 A |  | 100% |  |  |  | 0.5h | 0.5h |
| 145 | 1.6.2 | **Segunda reunion** | 0.06d | 2017-06-19 09:00 A | 2017-06-19 09:30 A | 143 | 100% |  |  |  | 0.5h | 0.5h |
| 146 | 1.6.2.1 | Acta de reunion y obbservaciones | 0.5h | 2017-06-19 09:00 A | 2017-06-19 09:30 A |  | 100% |  |  |  | 0.5h | 0.5h |
| 147 | 1.6.3 | **tercera reunion** | 0.06d | 2017-07-19 09:00 | 2017-07-19 09:30 |  |  |  |  |  | 0.5h |  |
| 148 | 1.6.3.1 | Acta de reunion y obbservaciones | 0.5h | 2017-07-19 09:00 | 2017-07-19 09:30 |  |  |  | 0d |  | 0.5h |  |
